# Cronograma - Projeto BI Producao (BaseLine) v2_3

Schedule from MS Project, 2024-09-16 to 2025-08-29, status date 2025-01-16, costs in $, A marks actual dates.

## Calendars

- Padrão DTI: Mon-Fri 07:00-11:40, 12:40-15:40, 15:55-16:45; Sat-Sun off. Exceptions (off unless hours are given): 2025-04-05 09:00-12:00, 13:00-18:00 (Implantação Step1).

## Resources

| Resource | Rate |
| --- | --- |
| Não atribuído |  |
| Christyan(DTI) | 50 |
| Rodiney(DTI) | 70 |
| Luan(DTI) | 10 |
| Levi(DTI) | 10 |
| Leonardo(DTI) | 10 |
| Equipe_Infra | 10 |
| Laercio | 10 |
| Fabio | 10 |
| Alan(DTI) | 10 |
| Time HDA | 10 |
| Time Shinrai HDA | 10 |
| Marcio(DTI) | 10 |
| Wesley(DTI) | 10 |
| Wantuil(DTI) | 10 |
| v | 10 |
| Alexander(DTI) | 10 |
| BP_Sustentação | 10 |
| Operação(DTI) | 10 |

## Schedule

| ID | WBS | Task | Duration | Start | Finish | Predecessors | Complete | Remaining | Total slack | Constraint | Resources | Work | Actual work | Cost | Actual cost | %Previsto | StatusAtividade | FarolStatus |
| --- | --- | --- | --- | --- | --- | --- | --- | --- | --- | --- | --- | --- | --- | --- | --- | --- | --- | --- |
| 1 | 1 | **PROJETO SHINRAI** | 266.19d | 2024-09-16 A | 2025-08-29 |  | 22% | 206.46d | 0d |  |  | 1089.52h | 767.48h | 39,915.75 | 28,133.75 | 0% | Sem baseline | Sem baseline |
| 2 | 1.1 | **PROJETO GESTAO CREDENCIAIS HDA** | 266.19d | 2024-09-16 A | 2025-08-29 |  | 22% | 206.46d | 0d |  |  | 1089.52h | 767.48h | 39,915.75 | 28,133.75 | 0% | Sem baseline | Sem baseline |
| 4 | 1.1.1 | Kickof com HDA (alinhamento do tema) | 1d | 2024-09-16 A | 2024-09-16 A |  | 100% |  |  |  | Time Shinrai HDA | 8h | 8h | 80 | 80 | 0% | Sem baseline | Sem baseline |
| 6 | 1.1.2 | **ASSESSMENT DTI HDA - PROCESSO DE GESTÃO DE CREDENCIAS** | 43.25d | 2024-09-16 A | 2024-11-11 A |  | 100% |  |  |  |  | 328h | 328h | 8,080 | 8,080 | 0% | Sem baseline | Sem baseline |
| 7 | 1.1.2.1 | Identificar app c/ arquivo texto para armazenamento de senhas de usuário de bd | 10d | 2024-10-07 A | 2024-10-18 A |  | 100% |  |  | start no earlier than 2024-10-07 | Christyan(DTI); Alan(DTI) | 160h | 160h | 4,800 | 4,800 | 0% | Sem baseline | Sem baseline |
| 8 | 1.1.2.2 | Identificações usuários das aplicações | 5d | 2024-11-05 A | 2024-11-11 A |  | 100% |  |  | start no earlier than 2024-11-05 | Christyan(DTI); Marcio(DTI); Alan(DTI); Wesley(DTI) | 160h | 160h | 3,200 | 3,200 | 0% | Sem baseline | Sem baseline |
| 9 | 1.1.2.3 | Revisões da propriedade de login ao S.O. ativa | 1d | 2024-09-16 A | 2024-09-16 A |  | 100% |  |  |  | Wantuil(DTI) | 8h | 8h | 80 | 80 | 0% | Sem baseline | Sem baseline |
| 11 | 1.1.3 | **AVALIAÇÃO PROPOSTAS DE SOLUÇÃO (problemas de gestão de credenciais encontrados na HDA)** | 35.69d | 2024-12-02 A | 2025-01-16 A |  | 100% |  |  |  |  | 320h | 320h | 14,400 | 14,400 | 0% | Sem baseline | Sem baseline |
| 12 | 1.1.3.1 | Brainstorming de ações para mitigação dos problemas na HDA | 5d | 2024-12-02 A | 2024-12-06 A |  | 100% |  |  | start no earlier than 2024-12-02 | Christyan(DTI); Wantuil(DTI) | 80h | 80h | 2,400 | 2,400 | 0% | Sem baseline | Sem baseline |
| 13 | 1.1.3.2 | Avaliação da documentação compartilhada com os objetivos do projeto | 3d | 2024-12-09 A | 2024-12-11 A | 12 | 100% |  |  | start no earlier than 2024-12-09 | Christyan(DTI) | 24h | 24h | 1,200 | 1,200 | 0% | Sem baseline | Sem baseline |
| 14 | 1.1.3.3 | Benchmarking esteria de implantação com HSA/HSF | 2d | 2024-12-12 A | 2024-12-13 A | 13 | 100% |  |  | start no earlier than 2024-12-12 | Christyan(DTI) | 16h | 16h | 800 | 800 | 0% | Sem baseline | Sem baseline |
| 15 | 1.1.3.4 | Confirmação das Propostas de soluções | 1d | 2024-12-16 A | 2024-12-16 A | 14 | 100% |  |  | start no earlier than 2024-12-16 | Christyan(DTI) | 8h | 8h | 400 | 400 | 0% | Sem baseline | Sem baseline |
| 16 | 1.1.3.5 | Elaboração do Material de aprovação | 23d | 2024-12-17 A | 2025-01-15 A | 15 | 100% |  |  | start no earlier than 2024-12-17 | Christyan(DTI) | 184h | 184h | 9,200 | 9,200 | 0% | Sem baseline | Sem baseline |
| 17 | 1.1.3.6 | Soudan com a Gerencia & Gerencia Geral HDA | 1d | 2025-01-15 A | 2025-01-16 A | 16 | 100% |  |  |  | Christyan(DTI) | 8h | 8h | 400 | 400 | 0% | Sem baseline | Sem baseline |
| 19 | 1.1.4 | **DESENVOLVIMENTO DA PROPOSTA DE SOLUÇÃO HDA** | 171.62d | 2025-01-17 A | 2025-08-29 |  | 17% | 141.7d | 0d |  |  | 433.51h | 111.47h | 17,355.75 | 5,573.75 | 0% | Sem baseline | Sem baseline |
| 20 | 1.1.4.1 | **ATENDIMENTO A SOLICITAÇÕES DA GERENCIA GERAL HDA** | 47.25d | 2025-01-17 A | 2025-03-20 A |  | 100% |  |  |  |  | 83h | 83h | 4,150 | 4,150 | 0% | Sem baseline | Sem baseline |
| 21 | 1.1.4.1.1 | **Revisão Lateral da utilização dos repositórios de codigo fonte HDA** | 19d | 2025-01-21 A | 2025-02-14 A |  | 100% |  |  |  |  | 10h | 10h | 500 | 500 | 0% | Sem baseline | Sem baseline |
| 22 | 1.1.4.1.1.1 | Obtenção de permisão de acesso aos repositorios | 16d | 2025-01-21 A | 2025-02-11 A | 17FS+3d | 100% |  |  | start no earlier than 2025-01-20 | Christyan(DTI) [5%] | 6.4h | 6.4h | 320 | 320 | 0% | Sem baseline | Sem baseline |
| 23 | 1.1.4.1.1.2 | Levantamento de Repositorios de Cod Fonte Pendente de Retorno para PRD por plataforma | 3d | 2025-02-11 A | 2025-02-14 A | 22 | 100% |  |  |  | Christyan(DTI) [5%] | 1.2h | 1.2h | 60 | 60 | 0% | Sem baseline | Sem baseline |
| 24 | 1.1.4.1.1.3 | Comparar informações do Controle de Objetos Vs Repositorios de Código Fontes | 3d | 2025-02-11 A | 2025-02-14 A | 22 | 100% |  |  |  | Christyan(DTI) [5%] | 1.2h | 1.2h | 60 | 60 | 0% | Sem baseline | Sem baseline |
| 25 | 1.1.4.1.1.4 | Mapear repositorios de codigo de aplicações desativadas | 3d | 2025-02-11 A | 2025-02-14 A | 22 | 100% |  |  |  | Christyan(DTI) [5%] | 1.2h | 1.2h | 60 | 60 | 0% | Sem baseline | Sem baseline |
| 26 | 1.1.4.1.2 | Revisão Lateral do AS-IS esteira de deploy HDA | 5d | 2025-01-21 A | 2025-01-28 A | 17FS+3d | 100% |  |  |  | Christyan(DTI) [5%] | 2h | 2h | 100 | 100 | 0% | Sem baseline | Sem baseline |
| 27 | 1.1.4.1.3 | Levantamento de projetos que não estão no controle de objetos | 5d | 2025-01-21 A | 2025-01-28 A | 17FS+3d | 100% |  |  |  | Christyan(DTI) [5%] | 2h | 2h | 100 | 100 | 0% | Sem baseline | Sem baseline |
| 28 | 1.1.4.1.4 | **Obtenção dos Fontes do Timechecker** | 47.25d | 2025-01-17 A | 2025-03-20 A |  | 100% |  |  |  |  | 69h | 69h | 3,450 | 3,450 | 0% | Sem baseline | Sem baseline |
| 29 | 1.1.4.1.4.1 | Levantamento de dados com BP's do tema | 4d | 2025-01-17 A | 2025-01-22 A |  | 100% |  |  | start no earlier than 2025-01-17 | Christyan(DTI) [5%] | 8h | 8h | 400 | 400 | 0% | Sem baseline | Sem baseline |
| 30 | 1.1.4.1.4.2 | Solicitação de Proposta Comercial com fornecedor Jacks | 28d | 2025-01-24 A | 2025-03-03 A | 29FS+2d | 100% |  |  |  | Christyan(DTI) [5%] | 56h | 56h | 2,800 | 2,800 | 0% | Sem baseline | Sem baseline |
| 31 | 1.1.4.1.4.3 | Soudan com Gerencia Geral | 0.5d | 2025-03-18 A | 2025-03-18 A | 30FS+11d | 100% |  |  |  | Christyan(DTI) [5%] | 1h | 1h | 50 | 50 | 0% | Sem baseline | Sem baseline |
| 32 | 1.1.4.1.4.4 | Revisão da Proposta Comercial com Fornecedor | 0.5d | 2025-03-18 A | 2025-03-19 A | 31 | 100% |  |  |  | Christyan(DTI) [5%] | 1h | 1h | 50 | 50 | 0% | Sem baseline | Sem baseline |
| 33 | 1.1.4.1.4.5 | Aprovação proposta comercial | 0.5d | 2025-03-19 A | 2025-03-19 A | 32 | 100% |  |  |  | Christyan(DTI) [5%] | 1h | 1h | 50 | 50 | 0% | Sem baseline | Sem baseline |
| 34 | 1.1.4.1.4.6 | Acompanhar serviço do fornecedor | 0.5d | 2025-03-19 A | 2025-03-20 A | 33 | 100% |  |  |  | Christyan(DTI) [5%] | 1h | 1h | 50 | 50 | 0% | Sem baseline | Sem baseline |
| 35 | 1.1.4.1.4.7 | Estruturar um repositório para armazenamento de fontes do timechecker; | 0.5d | 2025-03-20 A | 2025-03-20 A | 33 | 100% |  |  | start no earlier than 2025-04-01 | Christyan(DTI) [5%] | 1h | 1h | 50 | 50 | 0% | Sem baseline | Sem baseline |
| 37 | 1.1.4.2 | Planejar estratégia de implantação do tema na HDA (separação em steps) | 5d | 2025-02-17 A | 2025-02-21 A |  | 100% |  |  | start no earlier than 2025-02-17 | Christyan(DTI) [5%] | 2h | 2h | 100 | 100 | 0% | Sem baseline | Sem baseline |

Notes:
- 26: COnfirmar se os analistas estão devolvendo o repositorio para GPPROD ou se estão compilando para PRD direto da GPWORK
- 37: 1º Step: / - Regularização das 17 aplicações; / 2º Step: / - Criação do Comitê; / 3º Step: / - Modernização (Comitê [CodeReview, Auditoria, Segurança, etc] / Esteira de Implantação[Devops]);

| ID | WBS | Task | Duration | Start | Finish | Predecessors | Complete | Remaining | Total slack | Constraint | Resources | Work | Actual work | Cost | Actual cost | %Previsto | StatusAtividade | FarolStatus |
| --- | --- | --- | --- | --- | --- | --- | --- | --- | --- | --- | --- | --- | --- | --- | --- | --- | --- | --- |
| 39 | 1.1.4.3 | **1º STEP: CRIAÇÃO DO COMITÊ DE IMPLANTAÇÃO HDA & REGULARIZAÇÃO DAS 17 APLICAÇÕES** | 73.19d | 2025-02-24 A | 2025-05-29 |  | 12% | 64.56d | 70.12d |  |  | 280.12h | 26.48h | 9,685.75 | 1,323.75 | 0% | Sem baseline | Sem baseline |
| 40 | 1.1.4.3.1 | **Aprovação HDA** | 32.29d | 2025-02-24 A | 2025-04-07 |  | 99% | 0.1d | 111.03d |  |  | 12.52h | 12.47h | 625.75 | 623.75 | 0% | Sem baseline | Sem baseline |
| 41 | 1.1.4.3.1.1 | Elaborar Material de Aprovação da Estratégia HDA | 23d | 2025-02-24 A | 2025-03-26 A | 37FS+1d | 100% |  |  |  | Christyan(DTI) [5%] | 9.2h | 9.2h | 460 | 460 | 0% | Sem baseline | Sem baseline |
| 42 | 1.1.4.3.1.2 | Previa Supervisão e Gerencia | 0.5d | 2025-03-26 A | 2025-03-26 A | 41 | 100% |  |  |  | Christyan(DTI) [5%] | 0.2h | 0.2h | 10 | 10 | 0% | Sem baseline | Sem baseline |
| 43 | 1.1.4.3.1.3 | Ajustes solicitados na Previa | 7.69d | 2025-03-26 A | 2025-04-04 A | 42 | 100% |  |  | finish no earlier than 2025-04-04 | Christyan(DTI) [5%] | 3.08h | 3.08h | 153.75 | 153.75 | 0% | Sem baseline | Sem baseline |
| 44 | 1.1.4.3.1.4 | Aprovação Gerencia Geral | 0.1d | 2025-04-07 | 2025-04-07 | 43FS+1d |  |  | 111.03d |  | Christyan(DTI) [5%] | 0.04h |  | 2 |  | 0% | Sem baseline | Sem baseline |
| 46 | 1.1.4.3.2 | **a) REGULARIZAÇÃO DAS 17 APLICAÇÕES** | 64.75d | 2025-03-03 A | 2025-05-23 |  | 3% | 63.09d | 73.94d |  |  | 211.2h | 4h | 6,240 | 200 | 0% | Sem baseline | Sem baseline |
| 47 | 1.1.4.3.2.1 | **Retorno das Bases de HML para PRD** | 64.75d | 2025-03-03 A | 2025-05-23 |  | 3% | 63.09d | 73.94d |  |  | 211.2h | 4h | 6,240 | 200 | 0% | Sem baseline | Sem baseline |
| 48 | 1.1.4.3.2.1.1 | Plano para cada uma das 17 aplicações | 5d | 2025-03-03 A | 2025-03-07 A |  | 100% |  |  | start no earlier than 2025-03-03 | Christyan(DTI) [5%] | 2h | 2h | 100 | 100 | 0% | Sem baseline | Sem baseline |
| 49 | 1.1.4.3.2.1.2 | Elaboração de material de apresentação para infra e analistas | 5d | 2025-03-17 A | 2025-03-21 A |  | 100% |  |  | start no earlier than 2025-03-17 | Christyan(DTI) [5%] | 2h | 2h | 100 | 100 | 0% | Sem baseline | Sem baseline |
| 50 | 1.1.4.3.2.1.3 | **Preparação** | 27.62d | 2025-04-14 | 2025-05-19 |  |  |  | 78.19d |  |  | 65.2h |  | 2,396 |  | 0% | Sem baseline | Sem baseline |
| 51 | 1.1.4.3.2.1.3.1 | Alinhamento do processo com time de infra (Definição de plano) | 1d | 2025-04-14 | 2025-04-14 |  |  |  | 104.81d | start no earlier than 2025-04-14 | Christyan(DTI) [5%] | 0.4h |  | 20 |  | 0% | Sem baseline | Sem baseline |
| 53 | 1.1.4.3.2.1.3.2 | Revisa permisões de acesso aos repositorios de PRD das 17 app | 27d | 2025-04-14 | 2025-05-19 |  |  |  | 78.81d | start no earlier than 2025-04-14 | Alexander(DTI) [5%] | 10.8h |  | 108 |  | 0% | Sem baseline | Sem baseline |
| 54 | 1.1.4.3.2.1.3.3 | Criar folders GPWORK e GPPROD p/ 17 app | 27d | 2025-04-14 | 2025-05-19 |  |  |  | 78.19d | finish no earlier than 2025-05-19 | Alexander(DTI) [5%] | 10.8h |  | 108 |  | 0% | Sem baseline | Sem baseline |
| 56 | 1.1.4.3.2.1.3.4 | Criação da documentação de Implantação (J4, J5) | 27d | 2025-04-14 | 2025-05-19 |  |  |  | 78.19d | finish no earlier than 2025-05-19 | Christyan(DTI) [5%] | 10.8h |  | 540 |  | 0% | Sem baseline | Sem baseline |
| 58 | 1.1.4.3.2.1.3.5 | Alinhamento do processo com analistas resp pelas 17 app | 27d | 2025-04-14 | 2025-05-19 |  |  |  | 78.19d | finish no earlier than 2025-05-19 | Christyan(DTI) [5%] | 10.8h |  | 540 |  | 0% | Sem baseline | Sem baseline |
| 59 | 1.1.4.3.2.1.3.6 | Elaboração da GMUD | 27d | 2025-04-14 | 2025-05-19 |  |  |  | 78.19d | finish no earlier than 2025-05-19 | Christyan(DTI) [5%] | 10.8h |  | 540 |  | 0% | Sem baseline | Sem baseline |
| 60 | 1.1.4.3.2.1.3.7 | Apresentação da GMUD | 27d | 2025-04-14 | 2025-05-19 |  |  |  | 78.19d | finish no earlier than 2025-05-19 | Christyan(DTI) [5%] | 10.8h |  | 540 |  | 0% | Sem baseline | Sem baseline |
| 62 | 1.1.4.3.2.1.4 | **Execução** | 31.25d | 2025-04-14 | 2025-05-23 |  |  |  | 73.94d |  |  | 142h |  | 3,644 |  | 0% | Sem baseline | Sem baseline |
| 63 | 1.1.4.3.2.1.4.1 | Solicita o retorno dos 17 repositorios de HML para PRD | 27d | 2025-04-14 | 2025-05-19 |  |  |  | 78.19d | finish no earlier than 2025-05-19 | BP_Sustentação [5%] | 10.8h |  | 108 |  | 0% | Sem baseline | Sem baseline |
| 64 | 1.1.4.3.2.1.4.2 | Executa o retorno dos 17 repositorios de HML para PRD | 27d | 2025-04-14 | 2025-05-19 |  |  |  | 78.19d | finish no earlier than 2025-05-19 | Operação(DTI) [5%] | 10.8h |  | 108 |  | 0% | Sem baseline | Sem baseline |
| 66 | 1.1.4.3.2.1.4.3 | **Alterar credenciais de PRD** | 31.25d | 2025-04-14 | 2025-05-23 |  |  |  | 73.94d |  |  | 120.4h |  | 3,428 |  | 0% | Sem baseline | Sem baseline |
| 67 | 1.1.4.3.2.1.4.3.1 | Altera as credencias de PRD das 17 app e atualiza cofre de senhas | 27d | 2025-04-14 | 2025-05-19 |  |  |  | 78.19d | finish no earlier than 2025-05-19 | Christyan(DTI) [5%]; Alexander(DTI) [5%] | 21.6h |  | 648 |  | 0% | Sem baseline | Sem baseline |
| 68 | 1.1.4.3.2.1.4.3.2 | Alterar fontes das 17 aplicações inserindo as credenciais de PRD que serão alteradas; | 27d | 2025-04-14 | 2025-05-19 |  |  |  | 78.19d | finish no earlier than 2025-05-19 | Christyan(DTI) [5%]; Alexander(DTI) [5%] | 21.6h |  | 648 |  | 0% | Sem baseline | Sem baseline |
| 69 | 1.1.4.3.2.1.4.3.3 | Compila 17 aplicações (geração dos executáveis para deploy em PRD) | 27d | 2025-04-14 | 2025-05-19 |  |  |  | 78.19d | finish no earlier than 2025-05-19 | Christyan(DTI) [5%]; Alexander(DTI) [5%] | 21.6h |  | 648 |  | 0% | Sem baseline | Sem baseline |
| 70 | 1.1.4.3.2.1.4.3.4 | Deploy em PRD | 27d | 2025-04-14 | 2025-05-19 |  |  |  | 78.19d | finish no earlier than 2025-05-19 | Christyan(DTI) [5%]; Alexander(DTI) [5%] | 21.6h |  | 648 |  | 0% | Sem baseline | Sem baseline |
| 71 | 1.1.4.3.2.1.4.3.5 | Validação do Deploy (Teste de acesso, execução da aplicação) | 27d | 2025-04-14 | 2025-05-19 |  |  |  | 78.19d | finish no earlier than 2025-05-19 | Christyan(DTI) [5%]; Alexander(DTI) [5%] | 21.6h |  | 648 |  | 0% | Sem baseline | Sem baseline |
| 72 | 1.1.4.3.2.1.4.3.6 | OPA | 27d | 2025-04-18 | 2025-05-23 |  |  |  | 73.94d | finish no earlier than 2025-05-23 | Christyan(DTI) [5%]; Alexander(DTI) [5%] | 12.4h |  | 188 |  | 0% | Sem baseline | Sem baseline |

Notes:
- 48: - O Retorno dos rep para PRD pode ser feito a qualquer momento; / - A alteração das credenciais de PRD irá parar as app. Portanto, deve ser feita com PRD parada (Sugestão: sabado);
- 51: - Entender se Ctrl Objetos Ainda funciona, quais problemas, ainda podemos considera-lo ou melhor trocar; / - avaliar se cria ctrl obj notes ou novas ofertas em pitstop; / - Definição de Plano
- 58: - Solicitar que façam nessa semana o retorno dos seus rep para PRD

| ID | WBS | Task | Duration | Start | Finish | Predecessors | Complete | Remaining | Total slack | Free slack | Constraint | Resources | Work | Actual work | Cost | Actual cost | %Previsto | StatusAtividade | FarolStatus |
| --- | --- | --- | --- | --- | --- | --- | --- | --- | --- | --- | --- | --- | --- | --- | --- | --- | --- | --- | --- |
| 74 | 1.1.4.3.3 | **b) CRIAÇÃO DO COMITÊ DE IMPLANTAÇÃO HDA** | 57.94d | 2025-03-17 A | 2025-05-29 |  | 18% | 47.66d | 70.12d |  |  |  | 56.4h | 10h | 2,820 | 500 | 0% | Sem baseline | Sem baseline |
| 75 | 1.1.4.3.3.1 | **Definição de Processos** | 57.94d | 2025-03-17 A | 2025-05-29 |  | 38% | 35.99d | 70.12d |  |  |  | 26.4h | 10h | 1,320 | 500 | 0% | Sem baseline | Sem baseline |
| 76 | 1.1.4.3.3.1.1 | Funcionograma do COMITE | 10d | 2025-03-17 A | 2025-03-28 A |  | 100% |  |  |  |  | Christyan(DTI) [5%] | 4h | 4h | 200 | 200 | 0% | Sem baseline | Sem baseline |
| 77 | 1.1.4.3.3.1.2 | Matriz RACI | 5d | 2025-03-17 A | 2025-03-21 A |  | 100% |  |  |  | finish no earlier than 2025-04-30 | Christyan(DTI) [5%] | 2h | 2h | 100 | 100 | 0% | Sem baseline | Sem baseline |
| 78 | 1.1.4.3.3.1.3 | Definição Fluxo de Deploy | 5d | 2025-03-17 A | 2025-03-21 A |  | 100% |  |  |  | finish no earlier than 2025-04-30 | Christyan(DTI) [5%] | 2h | 2h | 100 | 100 | 0% | Sem baseline | Sem baseline |
| 79 | 1.1.4.3.3.1.4 | Definição Fluxo de Cópia/Retorno de repositorio de codigo fonte | 5d | 2025-04-07 A | 2025-04-11 A |  | 100% |  |  |  | finish no earlier than 2025-04-30 | Christyan(DTI) [5%] | 2h | 2h | 100 | 100 | 0% | Sem baseline | Sem baseline |
| 80 | 1.1.4.3.3.1.5 | Atualizar padrões de serviço | 41d | 2025-04-07 | 2025-05-29 |  |  |  | 70.12d |  | start no earlier than 2025-04-07 | Christyan(DTI) [5%] | 16.4h |  | 820 |  | 0% | Sem baseline | Sem baseline |
| 82 | 1.1.4.3.3.2 | **Preparação do Ambiente** | 10d | 2025-05-01 | 2025-05-14 |  |  |  | 82d |  |  |  | 4h |  | 200 |  | 0% | Sem baseline | Sem baseline |
| 83 | 1.1.4.3.3.2.1 | Instalação das IDE's nas maquinas dos integrantes dos comitês | 10d | 2025-05-01 | 2025-05-14 |  |  |  | 82d |  | start no earlier than 2025-05-01 | Christyan(DTI) [5%] | 4h |  | 200 |  | 0% | Sem baseline | Sem baseline |
| 85 | 1.1.4.3.3.3 | **Criar nova oferta no pitstop** | 10d | 2025-05-01 | 2025-05-14 |  |  |  | 81.38d |  |  |  | 12h |  | 600 |  | 0% | Sem baseline | Sem baseline |
| 86 | 1.1.4.3.3.3.1 | Solicita cópia Fonte PRD para HML | 10d | 2025-05-01 | 2025-05-14 |  |  |  | 81.38d |  | finish no earlier than 2025-05-14 | Christyan(DTI) [5%] | 4h |  | 200 |  | 0% | Sem baseline | Sem baseline |
| 87 | 1.1.4.3.3.3.2 | Solicitação Deploy (Retorno de HML para PRD) | 10d | 2025-05-01 | 2025-05-14 |  |  |  | 81.38d |  | finish no earlier than 2025-05-14 | Christyan(DTI) [5%] | 4h |  | 200 |  | 0% | Sem baseline | Sem baseline |
| 88 | 1.1.4.3.3.3.3 | Solicitação Deploy (Sem Retorno de HML para PRD) | 10d | 2025-05-01 | 2025-05-14 |  |  |  | 81.38d |  | finish no earlier than 2025-05-14 | Christyan(DTI) [5%] | 4h |  | 200 |  | 0% | Sem baseline | Sem baseline |
| 90 | 1.1.4.3.3.4 | **Revisao dos Repositorios de Codigo Fonte** | 10.62d | 2025-05-12 | 2025-05-23 |  |  |  | 73.94d |  |  |  | 8h |  | 400 |  | 0% | Sem baseline | Sem baseline |
| 91 | 1.1.4.3.3.4.1 | Criação do repositorio de fontes GPPROD_TEMP | 10d | 2025-05-12 | 2025-05-23 |  |  |  | 74.56d |  | start no earlier than 2025-05-12 | Christyan(DTI) [5%] | 4h |  | 200 |  | 0% | Sem baseline | Sem baseline |
| 92 | 1.1.4.3.3.4.2 | Revisão de permissões de acesso aos folders GPWORK, GPPROD e GPPROD_TEMP | 10d | 2025-05-12 | 2025-05-23 |  |  |  | 73.94d |  | finish no earlier than 2025-05-23 | Christyan(DTI) [5%] | 4h |  | 200 |  | 0% | Sem baseline | Sem baseline |
| 94 | 1.1.4.3.3.5 | **Treinamento** | 16d | 2025-05-01 | 2025-05-22 |  |  |  | 76d |  |  |  | 6h |  | 300 |  | 0% | Sem baseline | Sem baseline |
| 95 | 1.1.4.3.3.5.1 | Preparar material para treinamento | 10d | 2025-05-01 | 2025-05-14 |  |  |  | 76d | 0d | start no earlier than 2025-05-01 | Christyan(DTI) [5%] | 4h |  | 200 |  | 0% | Sem baseline | Sem baseline |
| 96 | 1.1.4.3.3.5.2 | Treinamento no DTI HDA | 5d | 2025-05-15 | 2025-05-22 | 95FS+1d |  |  | 76d |  | start no earlier than 2025-04-07 | Christyan(DTI) [5%] | 2h |  | 100 |  | 0% | Sem baseline | Sem baseline |
| 98 | 1.1.4.4 | **2º STEP: MODERNIZAÇÃO AMBIENTE HDA** | 58d | 2025-06-16 | 2025-08-29 |  |  |  | 0d |  |  |  | 68.4h |  | 3,420 |  | 0% | Sem baseline | Sem baseline |
| 99 | 1.1.4.4.1 | **Modernização Comitê** | 23d | 2025-06-16 | 2025-07-15 |  |  |  | 0d |  |  |  | 27.6h |  | 1,380 |  | 0% | Sem baseline | Sem baseline |
| 100 | 1.1.4.4.1.1 | Criação Processo CodeReview (arquitetura) | 23d | 2025-06-16 | 2025-07-15 |  |  |  | 0d |  | start no earlier than 2025-06-16 | Christyan(DTI) [5%] | 9.2h |  | 460 |  | 0% | Sem baseline | Sem baseline |
| 102 | 1.1.4.4.1.2 | Criação Processo Auditoria (governança) | 23d | 2025-06-16 | 2025-07-15 |  |  |  | 35d |  | start no earlier than 2025-06-16 | Christyan(DTI) [5%] | 9.2h |  | 460 |  | 0% | Sem baseline | Sem baseline |
| 104 | 1.1.4.4.1.3 | Criação Processo Ranking Segurança (Cyber) | 23d | 2025-06-16 | 2025-07-15 |  |  |  | 35d |  | start no earlier than 2025-06-16 | Christyan(DTI) [5%] | 9.2h |  | 460 |  | 0% | Sem baseline | Sem baseline |

Notes:
- 92: - Conceder acesso apenas aos membros do comitê / - Retirar acesso de analistas

| ID | WBS | Task | Duration | Start | Finish | Predecessors | Total slack | Resources | Work | Cost | %Previsto | StatusAtividade | FarolStatus |
| --- | --- | --- | --- | --- | --- | --- | --- | --- | --- | --- | --- | --- | --- |
| 106 | 1.1.4.4.2 | **Modernização Esteira de Implantação[Devops]** | 34d | 2025-07-16 | 2025-08-29 |  | 0d |  | 40.8h | 2,040 | 0% | Sem baseline | Sem baseline |
| 107 | 1.1.4.4.2.1 | Implantação do GitLab (Repositorio de Codigo Fontes e Ctrl de Versão) | 34d | 2025-07-16 | 2025-08-29 | 100FS+1d | 0d | Christyan(DTI) [5%] | 13.6h | 680 | 0% | Sem baseline | Sem baseline |
| 109 | 1.1.4.4.2.2 | Implantação do SonarCube (Automação da Revisão de Codigo) | 34d | 2025-07-16 | 2025-08-29 | 100FS+1d | 0d | Christyan(DTI) [5%] | 13.6h | 680 | 0% | Sem baseline | Sem baseline |
| 111 | 1.1.4.4.2.3 | Implantação do Jenkings (Automação de Deploy) | 34d | 2025-07-16 | 2025-08-29 | 100FS+1d | 0d | Christyan(DTI) [5%] | 13.6h | 680 | 0% | Sem baseline | Sem baseline |
